# Conference Center Project

How a schedule from MS Project changed from version to version. A marks actual dates.

## Version 1 (saved 2015-12-09, file 08_03 Baseline.mpp)

Note of the change: adding project management files

| ID | WBS | Task | Duration | Start | Finish | Predecessors | Total float |
| --- | --- | --- | --- | --- | --- | --- | --- |
| 1 |  | Start project | 0d | 2016-10-03 | 2016-10-03 |  | 0d |
| 2 | 2 | **Update conference center** | 104d | 2016-10-03 | 2017-02-23 |  | 0d |
| 3 | 2.1 | **Update conference ctr technology** | 104d | 2016-10-03 | 2017-02-23 |  | 0d |
| 4 |  | Specify requirements | 2w | 2016-10-03 | 2016-10-14 | 1 | 0d |
| 5 | 2.1.2 | **Contract with vendor** | 14d | 2016-10-17 | 2016-11-03 |  | 0d |
| 6 |  | Obtain proposals | 1w | 2016-10-17 | 2016-10-21 | 4 | 0d |
| 7 |  | Select vendor | 3d | 2016-10-24 | 2016-10-26 | 6 | 0d |
| 8 |  | Negotiate | 5d | 2016-10-27 | 2016-11-02 | 7 | 0d |
| 9 |  | Sign contracts | 1d | 2016-11-03 | 2016-11-03 | 8 | 0d |
| 10 |  | Design update | 1w | 2016-11-04 | 2016-11-10 | 9 | 0d |
| 11 |  | Conference center design complete | 0d | 2016-11-10 | 2016-11-10 | 10 | 0d |
| 12 | 2.1.5 | **Install technology** | 23d | 2017-01-24 | 2017-02-23 |  | 0d |
| 13 |  | Run cables | 1w | 2017-01-24 | 2017-01-30 | 10, 23 | 0d |
| 14 |  | Set up equipment racks | 4d | 2017-01-31 | 2017-02-03 | 13 | 0d |
| 15 |  | Place equipment | 3d | 2017-02-06 | 2017-02-08 | 14 | 0d |
| 16 |  | Configure equipment | 3d | 2017-02-09 | 2017-02-13 | 15 | 0d |
| 17 |  | Connect to network | 3d | 2017-02-14 | 2017-02-16 | 16 | 0d |
| 18 |  | Test | 5d | 2017-02-17 | 2017-02-23 | 17 | 0d |
| 19 |  | Technology installed | 0d | 2017-02-23 | 2017-02-23 | 18 | 0d |
| 20 | 2.3 | **Remodel spaces** | 52d | 2016-11-11 | 2017-01-23 |  | 0d |
| 21 |  | Design spaces | 4w | 2016-11-11 | 2016-12-08 | 10 | 0d |
| 22 |  | Construct | 6w | 2016-12-09 | 2017-01-19 | 21 | 0d |
| 23 |  | Complete walkthrough | 2d | 2017-01-20 | 2017-01-23 | 22 | 0d |
| 24 | 3 | **Update hotel room technology** | 65d | 2016-10-03 | 2016-12-30 |  | 39d |
| 25 |  | Specify requirements | 2w | 2016-10-03 | 2016-10-14 | 4SS | 39d |
| 26 |  | Contract with vendor | 4w | 2016-10-17 | 2016-11-11 | 25 | 39d |
| 27 |  | Design update | 1w | 2016-11-14 | 2016-11-18 | 26 | 39d |
| 28 |  | Install technology | 6w | 2016-11-21 | 2016-12-30 | 27 | 39d |
| 29 |  | Project complete | 0d | 2017-02-23 | 2017-02-23 | 28, 18 | 0d |

## Version 2 (saved 2015-12-09, file 08_03 Progress.mpp)

Note of the change: adding project management files

Last finish 2017-02-23 → 2017-06-14 (+111d). Complete tasks 0 → 10.

Changed:

| ID | Task | Start | Finish | Duration | Complete | Total float |
| --- | --- | --- | --- | --- | --- | --- |
| 2 | **Update conference center** | 2016-10-03 A | 2017-02-23 → 2017-02-28 (+5d) | 104d → 107d | 0% → 60% |  |
| 3 | **Update conference ctr technology** | 2016-10-03 A | 2017-02-23 → 2017-02-28 (+5d) | 104d → 107d | 0% → 89% |  |
| 4 | Specify requirements | 2016-10-03 A | 2016-10-14 A |  | 0% → 100% | 0d → none |
| 5 | **Contract with vendor** | 2016-10-17 A | 2016-11-03 → 2016-11-11 A (+8d) | 14d → 20d | 0% → 100% | 0d → none |
| 6 | Obtain proposals | 2016-10-17 A | 2016-10-21 A |  | 0% → 100% | 0d → none |
| 7 | Select vendor | 2016-10-24 A | 2016-10-26 → 2016-10-28 A (+2d) | 3d → 5d | 0% → 100% | 0d → none |
| 8 | Negotiate | 2016-10-27 → 2016-10-31 A (+4d) | 2016-11-02 → 2016-11-10 A (+8d) | 5d → 9d | 0% → 100% | 0d → none |
| 9 | Sign contracts | 2016-11-03 → 2016-11-11 A (+8d) | 2016-11-03 → 2016-11-11 A (+8d) |  | 0% → 100% | 0d → none |
| 10 | Design update | 2016-11-04 → 2016-11-14 A (+10d) | 2016-11-10 → 2016-11-18 A (+8d) |  | 0% → 100% | 0d → none |
| 11 | Conference center design complete | 2016-11-10 → 2016-11-18 A (+8d) | 2016-11-10 → 2016-11-18 A (+8d) |  | 0% → 100% | 0d → none |
| 12 | **Install technology** | 2017-01-24 → 2017-02-01 A (+8d) | 2017-02-23 → 2017-02-28 (+5d) | 23d → 20d | 0% → 84% |  |
| 13 | Run cables | 2017-01-24 → 2017-02-01 A (+8d) | 2017-01-30 → 2017-06-14 A (+135d) | 1w → 10.8w | 0% → 100% | 0d → none |
| 14 | Set up equipment racks | 2017-01-31 → 2017-02-07 A (+7d) | 2017-02-03 → 2017-02-08 A (+5d) | 4d → 2d | 0% → 100% | 0d → none |
| 15 | Place equipment | 2017-02-06 → 2017-02-09 A (+3d) | 2017-02-08 → 2017-02-13 A (+5d) | 3d → 2.5d | 0% → 100% | 0d → none |
| 16 | Configure equipment | 2017-02-09 → 2017-02-14 (+5d) | 2017-02-13 → 2017-02-16 (+3d) |  |  |  |
| 17 | Connect to network | 2017-02-14 → 2017-02-17 (+3d) | 2017-02-16 → 2017-02-21 (+5d) |  |  |  |
| 18 | Test | 2017-02-17 → 2017-02-22 (+5d) | 2017-02-23 → 2017-02-28 (+5d) |  |  |  |
| 19 | Technology installed | 2017-02-23 → 2017-02-28 (+5d) | 2017-02-23 → 2017-02-28 (+5d) |  |  |  |
| 20 | **Remodel spaces** | 2016-11-11 → 2016-11-21 (+10d) | 2017-01-23 → 2017-01-31 (+8d) |  |  | 0d → 20d |
| 21 | Design spaces | 2016-11-11 → 2016-11-21 (+10d) | 2016-12-08 → 2016-12-16 (+8d) |  |  | 0d → 20d |
| 22 | Construct | 2016-12-09 → 2016-12-19 (+10d) | 2017-01-19 → 2017-01-27 (+8d) |  |  | 0d → 20d |
| 23 | Complete walkthrough | 2017-01-20 → 2017-01-30 (+10d) | 2017-01-23 → 2017-01-31 (+8d) |  |  | 0d → 20d |
| 29 | Project complete | 2017-02-23 → 2017-02-28 (+5d) | 2017-02-23 → 2017-02-28 (+5d) |  |  |  |
